# MIMIA

Schedule from Planner, 2017-10-30 to 2023-10-19.
EmbedSA
Phase: PA V1.0

## Calendars

- Default: Mon-Fri 08:00-12:00, 13:00-17:00; Sat-Sun off.

## Schedule

| ID | WBS | Task | Type | Duration | Start | Finish | Predecessors | Complete | Constraint | Work |
| --- | --- | --- | --- | --- | --- | --- | --- | --- | --- | --- |
| 1 | 1 | **INICIO** |  |  | 2017-10-30 | 2017-12-08 |  |  |  | 240h |
| 2 | 1.1 | Definicion obejtivos |  |  | 2017-10-30 | 2017-11-10 |  | 100% |  | 80h |
| 3 | 1.2 | Investigacion y Analisis |  |  | 2017-11-13 | 2017-12-08 | 2 | 100% |  | 160h |
| 4 | 1.3 | Decisiones | milestone | 0d | 2017-12-08 | 2017-12-08 | 3 | 100% |  |  |
| 5 | 2 | **PLANEACIÓN** |  |  | 2017-12-11 | 2018-02-20 | 1 |  |  | 504h |
| 6 | 2.1 | **Alcance** |  |  | 2017-12-11 | 2018-01-09 |  |  |  | 176h |
| 7 | 2.1.1 | Esquemas de Diseño |  |  | 2017-12-11 | 2017-12-12 |  | 100% |  | 16h |
| 8 | 2.1.2 | Investigacion y Elección |  |  | 2017-12-13 | 2017-12-15 | 7 | 100% |  | 24h |
| 9 | 2.1.3 | Bocetos Eléctricos |  |  | 2017-12-18 | 2017-12-20 | 8 | 79% |  | 24h |
| 10 | 2.1.4 | Bocetos de Redes |  |  | 2017-12-21 | 2017-12-26 | 9 | 100% |  | 32h |
| 11 | 2.1.5 | Bocetos de Aplicaciones |  |  | 2017-12-27 | 2018-01-09 | 10 | 100% |  | 80h |
| 12 | 2.2 | Planeamiento de tareas |  |  | 2018-01-10 | 2018-01-10 | 6 | 80% |  | 8h |
| 13 | 2.3 | Estimacion de Costos |  |  | 2018-01-10 | 2018-01-23 | 6 | 50% |  | 80h |
| 14 | 2.4 | Obtener Fondos |  |  | 2018-01-10 | 2018-02-20 | 6 | 50% |  | 240h |
| 15 | 3 | **EJECUCIÓN** |  |  | 2018-02-07 | 2023-07-13 | 13 |  | must start on 2018-02-02 | 16416h |
| 16 | 3.1 | **Inactividad** |  |  | 2019-04-01 | 2022-10-28 |  |  |  | 8920h |
| 17 | 3.1.1 | INCUBADORA EMPR. |  |  | 2019-04-01 | 2020-08-21 |  | 78% | must start on 2019-04-01 | 2920h |
| 18 | 3.1.2 | Vacaciones 19-20 |  |  | 2019-12-16 | 2020-03-06 |  | 100% | must start on 2019-12-14 | 480h |
| 19 | 3.1.3 | Cursada Materias 2020 |  |  | 2020-03-09 | 2020-11-27 | 18 | 100% |  | 1520h |
| 20 | 3.1.4 | Vacaciones 20-21 |  |  | 2020-11-30 | 2021-02-19 | 19 | 100% |  | 480h |
| 21 | 3.1.5 | Cursadas Materias 2021 |  |  | 2021-02-22 | 2021-11-12 | 20 | 100% |  | 1520h |
| 22 | 3.1.6 | Vacaciones 21-22 |  |  | 2021-11-15 | 2022-02-04 | 21 | 100% |  | 480h |
| 23 | 3.1.7 | Cursadas Materias 2022 |  |  | 2022-02-07 | 2022-10-28 | 22 | 40% |  | 1520h |
| 24 | 3.2 | **Versiones 0.1** |  |  | 2018-02-07 | 2020-04-17 |  |  |  | 4736h |
| 25 | 3.2.1 | Compra de equipos e insumos |  |  | 2018-02-07 | 2018-03-06 |  | 98% | must start on 2018-02-07 | 160h |

| ID | WBS | Task | Start | Finish | Predecessors | Complete | Constraint | Work |
| --- | --- | --- | --- | --- | --- | --- | --- | --- |
| 26 | 3.2.2 | **Programacion de Firmware** | 2018-02-14 | 2018-09-12 |  |  |  | 1240h |
| 27 | 3.2.2.1 | **Firmware monitor** | 2018-02-14 | 2018-03-30 |  |  |  | 264h |
| 28 | 3.2.2.1.1 | **Aplicacion Gral** | 2018-02-14 | 2018-03-27 |  |  |  | 240h |
| 29 | 3.2.2.1.1.1 | Imple y Prueb unitarias | 2018-02-14 | 2018-03-27 |  | 70% | must start on 2018-02-14 | 240h |
| 30 | 3.2.2.1.2 | Pruebas Gral | 2018-03-28 | 2018-03-30 | 28 |  |  | 24h |
| 31 | 3.2.2.2 | **Firmware PA** | 2018-04-02 | 2018-05-17 | 27 |  |  | 280h |
| 32 | 3.2.2.2.1 | **Aplicacion Gral** | 2018-04-02 | 2018-05-11 |  |  |  | 248h |
| 33 | 3.2.2.2.1.1 | App | 2018-04-02 | 2018-04-02 |  | 90% |  | 8h |
| 34 | 3.2.2.2.1.2 | Pueba unitarias | 2018-04-02 | 2018-05-11 |  | 30% |  | 240h |
| 35 | 3.2.2.2.2 | Prueba Gral | 2018-05-14 | 2018-05-17 | 32 |  |  | 32h |
| 36 | 3.2.2.3 | **Firmware Repetidor** | 2018-05-18 | 2018-05-31 | 31 |  |  | 88h |
| 37 | 3.2.2.3.1 | **Aplicacion Gral** | 2018-05-18 | 2018-05-28 |  |  |  | 64h |
| 38 | 3.2.2.3.1.1 | App | 2018-05-18 | 2018-05-18 |  | 90% |  | 8h |
| 39 | 3.2.2.3.1.2 | Prueba unitaria | 2018-05-18 | 2018-05-28 |  | 90% |  | 56h |
| 40 | 3.2.2.3.2 | Prueba Gral | 2018-05-29 | 2018-05-31 | 37 |  |  | 24h |
| 41 | 3.2.2.4 | **Firmware PANCO** | 2018-06-01 | 2018-07-23 | 36 |  |  | 304h |
| 42 | 3.2.2.4.1 | **Aplicacion Gral** | 2018-06-01 | 2018-07-12 |  |  |  | 248h |
| 43 | 3.2.2.4.1.1 | App | 2018-06-01 | 2018-06-01 |  | 95% |  | 8h |
| 44 | 3.2.2.4.1.2 | Pruebas unitarias | 2018-06-01 | 2018-07-12 |  | 10% |  | 240h |
| 45 | 3.2.2.4.2 | Prueba Gral | 2018-07-13 | 2018-07-23 | 42 |  |  | 56h |
| 46 | 3.2.2.5 | **Firmware GateWay** | 2018-07-24 | 2018-09-12 | 41 |  |  | 304h |
| 47 | 3.2.2.5.1 | **Aplicacion Gral** | 2018-07-24 | 2018-09-03 |  |  |  | 248h |
| 48 | 3.2.2.5.1.1 | App | 2018-07-24 | 2018-07-24 |  | 90% |  | 8h |
| 49 | 3.2.2.5.1.2 | Prueba Unitaria | 2018-07-24 | 2018-09-03 |  | 10% |  | 240h |
| 50 | 3.2.2.5.2 | Prueba Gral | 2018-09-04 | 2018-09-12 | 47 |  |  | 56h |

| ID | WBS | Task | Start | Finish | Predecessors | Complete | Constraint | Work |
| --- | --- | --- | --- | --- | --- | --- | --- | --- |
| 51 | 3.2.3 | **Diseño y Armado de PCB** | 2018-09-13 | 2018-12-20 | 26 |  |  | 568h |
| 52 | 3.2.3.1 | **Diseño y diagramado** | 2018-09-13 | 2018-11-23 |  |  |  | 416h |
| 53 | 3.2.3.1.1 | Diseño Monitor | 2018-09-13 | 2018-09-18 |  | 100% |  | 32h |
| 54 | 3.2.3.1.2 | Diseño PA | 2018-09-19 | 2018-10-04 | 53 | 100% |  | 96h |
| 55 | 3.2.3.1.3 | Diseño Repetidor | 2018-10-05 | 2018-10-12 | 54 | 100% |  | 48h |
| 56 | 3.2.3.1.4 | Diseño PANCO | 2018-10-15 | 2018-11-02 | 55 | 100% |  | 120h |
| 57 | 3.2.3.1.5 | Diseño GateWay | 2018-11-05 | 2018-11-23 | 56 | 100% |  | 120h |
| 58 | 3.2.3.2 | Impresion PCB | 2018-11-26 | 2018-11-26 | 52 | 100% |  | 8h |
| 59 | 3.2.3.3 | Grabado y Mecanizacion | 2018-11-27 | 2018-11-27 | 58 | 100% |  | 8h |
| 60 | 3.2.3.4 | Montaje de Componentes | 2018-11-28 | 2018-12-06 | 59 | 90% |  | 56h |
| 61 | 3.2.3.5 | Pruebas de Dispositivo | 2018-12-07 | 2018-12-20 | 60 | 50% |  | 80h |
| 62 | 3.2.4 | Pruebas Cadena Avance | 2018-12-21 | 2019-01-31 | 51 | 43% |  | 240h |
| 63 | 3.2.5 | Version MIMIA OPT | 2019-02-01 | 2019-06-06 | 62 | 77% |  | 720h |
| 64 | 3.2.6 | Version MIMIA MEMS | 2019-06-07 | 2019-10-10 | 63 | 85% |  | 720h |
| 65 | 3.2.7 | Version CIAA MOTE | 2019-10-11 | 2020-02-07 | 64 | 33% |  | 688h |
| 66 | 3.2.8 | Version MIMIA STICK | 2020-02-10 | 2020-03-20 | 65 | 42% |  | 240h |
| 67 | 3.2.9 | Version MIMIA XSocket | 2020-03-23 | 2020-04-17 | 66 | 38% |  | 160h |
| 68 | 3.3 | **Versión 0.9** | 2021-09-13 | 2022-11-21 | 24 |  |  | 816h |
| 69 | 3.3.1 | **CbaMot Monitor** | 2021-09-13 | 2022-11-21 |  |  |  | 816h |
| 70 | 3.3.1.1 | **Actualizacion Firmware** | 2021-09-13 | 2021-09-29 |  |  |  | 104h |
| 71 | 3.3.1.1.1 | optimizacion APP | 2021-09-13 | 2021-09-24 |  |  | must start on 2021-09-12 | 80h |
| 72 | 3.3.1.1.2 | Pruebas | 2021-09-27 | 2021-09-29 | 71 |  |  | 24h |
| 73 | 3.3.1.2 | **Diseño Gabinete** | 2021-09-30 | 2021-10-12 | 70 |  |  | 72h |
| 74 | 3.3.1.2.1 | Aprendizaje soft | 2021-09-30 | 2021-10-06 |  | 100% |  | 40h |
| 75 | 3.3.1.2.2 | Diseño gabinete | 2021-10-07 | 2021-10-11 | 74 | 79% |  | 24h |
| 76 | 3.3.1.2.3 | Impresion | 2021-10-12 | 2021-10-12 | 75 | 95% |  | 8h |

| ID | WBS | Task | Type | Duration | Start | Finish | Predecessors | Complete | Constraint | Work |
| --- | --- | --- | --- | --- | --- | --- | --- | --- | --- | --- |
| 77 | 3.3.1.3 | **Actualizacion PCB** |  |  | 2021-10-13 | 2022-11-21 | 76 |  |  | 640h |
| 78 | 3.3.1.3.1 | Diseño PCB |  |  | 2021-10-13 | 2021-10-18 |  | 90% |  | 32h |
| 79 | 3.3.1.3.2 | Gabado y Mecanizacion |  |  | 2021-10-19 | 2021-11-09 | 78 | 90% |  | 128h |
| 80 | 3.3.1.3.3 | Montaje |  |  | 2022-08-30 | 2022-11-21 | 79 | 10% | start no earlier than 2022-08-30 | 480h |
| 81 | 3.3.1.4 | Presentacion esquema solucion a Cliente | milestone | 0d | 2022-07-05 | 2022-07-05 |  | 100% | must start on 2022-07-05 |  |
| 82 | 3.4 | **Versión 0.9a (Prototipo)** |  |  | 2022-11-22 | 2023-07-13 | 68 |  |  | 1944h |
| 83 | 3.4.1 | ApiRestFul, Admin Server, Pruebas. |  |  | 2022-11-22 | 2023-03-27 |  | 80% |  | 720h |
| 84 | 3.4.2 | Pruebas y verificación |  |  | 2022-11-22 | 2022-12-12 |  |  |  | 120h |
| 85 | 3.4.3 | Actualización Firmware |  |  | 2022-12-13 | 2022-12-26 | 84 |  |  | 80h |
| 86 | 3.4.4 | Actualización PCB |  |  | 2022-12-27 | 2023-01-23 | 85 | 1% |  | 160h |
| 87 | 3.4.5 | Demora programada (Finales) |  | 60d | 2023-01-24 | 2023-04-17 | 86 |  |  | 360h |
| 88 | 3.4.6 | Pruebas de impacto servidor |  |  | 2023-04-18 | 2023-05-18 | 87 | 51% |  | 184h |
| 89 | 3.4.7 | Presentación técnica lote pruebas | milestone | 0d | 2023-05-18 | 2023-05-18 | 88 |  |  |  |
| 90 | 3.4.8 | Documentacion latex V0.9a |  |  | 2023-05-19 | 2023-06-15 | 89 |  |  | 160h |
| 91 | 3.4.9 | Demora programada (Finales) |  |  | 2023-06-16 | 2023-07-13 | 90 |  |  | 160h |
| 92 | 3.5 | Pruebas en campo | milestone | 0d | 2023-07-13 | 2023-07-13 | 82 |  |  |  |
| 93 | 4 | Armado de carpetas y documentacion |  |  | 2023-07-14 | 2023-07-27 | 92 |  |  | 80h |
| 94 | 5 | Presentación documentos cátedra | milestone | 0d | 2023-07-27 | 2023-07-27 | 93 |  |  |  |
| 95 | 6 | Armando de defensa trabajo final |  |  | 2023-07-28 | 2023-10-19 | 94 |  |  | 480h |
| 96 | 7 | Presentación y Defensa del Proyecto | milestone | 0d | 2023-10-19 | 2023-10-19 | 95 |  |  |  |

Notes:
- 82: Etapa de producto para pruebas / especificas y lote de pruebas en laboratorio
