# MIMIA

Schedule from Planner, 2017-10-30 to 2022-05-31.
EmbedSA
Phase: PA V1.0

## Calendars

- Default: Mon-Fri 08:00-12:00, 13:00-17:00; Sat-Sun off.

## Schedule

| ID | WBS | Task | Start | Finish | Predecessors | Complete | Constraint | Work |
| --- | --- | --- | --- | --- | --- | --- | --- | --- |
| 1 | 1 | **INICIO** | 2017-10-30 | 2017-12-22 |  |  |  | 320h |
| 2 | 1.1 | Definicion obejtivos | 2017-10-30 | 2017-11-10 |  | 100% |  | 80h |
| 3 | 1.2 | Investigacion y Analisis | 2017-11-13 | 2017-12-08 | 2 | 100% |  | 160h |
| 4 | 1.3 | Decisiones | 2017-12-11 | 2017-12-22 | 3 | 100% |  | 80h |
| 5 | 2 | **PLANEACION** | 2017-12-25 | 2018-03-06 | 1 |  |  | 504h |
| 6 | 2.1 | **Alcance** | 2017-12-25 | 2018-01-23 |  |  |  | 176h |
| 7 | 2.1.1 | Esquemas de Diseño | 2017-12-25 | 2017-12-26 |  | 100% |  | 16h |
| 8 | 2.1.2 | Investigacion y Eleccion | 2017-12-27 | 2017-12-29 | 7 | 100% |  | 24h |
| 9 | 2.1.3 | Bocetos Eléctricos | 2018-01-01 | 2018-01-03 | 8 | 100% |  | 24h |
| 10 | 2.1.4 | Bocetos de Redes | 2018-01-04 | 2018-01-09 | 9 | 100% |  | 32h |
| 11 | 2.1.5 | Bocetos de Aplicaciones | 2018-01-10 | 2018-01-23 | 10 | 100% |  | 80h |
| 12 | 2.2 | Planeamiento de tareas | 2018-01-24 | 2018-01-24 | 6 | 80% |  | 8h |
| 13 | 2.3 | Estimacion de Costos | 2018-01-24 | 2018-02-06 | 6 | 50% |  | 80h |
| 14 | 2.4 | Obtener Fondos | 2018-01-24 | 2018-03-06 | 6 | 50% |  | 240h |
| 15 | 3 | **EJECUCIÓN** | 2018-02-07 | 2022-04-19 | 13 |  | must start on 2018-02-02 | 8952h |
| 16 | 3.1 | **Versiones 0.1** | 2018-02-07 | 2020-04-17 |  |  |  | 4616h |
| 17 | 3.1.1 | Compra de equipos e insumos | 2018-02-07 | 2018-02-13 |  | 95% | must start on 2018-02-07 | 40h |
| 18 | 3.1.2 | **Programacion de Firmware** | 2018-02-14 | 2018-09-12 |  |  |  | 1240h |
| 19 | 3.1.2.1 | **Firmware monitor** | 2018-02-14 | 2018-03-30 |  |  |  | 264h |
| 20 | 3.1.2.1.1 | **Aplicacion Gral** | 2018-02-14 | 2018-03-27 |  |  |  | 240h |
| 21 | 3.1.2.1.1.1 | Imple y Prueb unitarias | 2018-02-14 | 2018-03-27 |  | 70% | must start on 2018-02-14 | 240h |
| 22 | 3.1.2.1.2 | Pruebas Gral | 2018-03-28 | 2018-03-30 | 20 |  |  | 24h |
| 23 | 3.1.2.2 | **Firmware PA** | 2018-04-02 | 2018-05-17 | 19 |  |  | 280h |
| 24 | 3.1.2.2.1 | **Aplicacion Gral** | 2018-04-02 | 2018-05-11 |  |  |  | 248h |
| 25 | 3.1.2.2.1.1 | App | 2018-04-02 | 2018-04-02 |  | 90% |  | 8h |
| 26 | 3.1.2.2.1.2 | Pueba unitarias | 2018-04-02 | 2018-05-11 |  | 30% |  | 240h |
| 27 | 3.1.2.2.2 | Prueba Gral | 2018-05-14 | 2018-05-17 | 24 |  |  | 32h |

| ID | WBS | Task | Start | Finish | Predecessors | Complete | Work |
| --- | --- | --- | --- | --- | --- | --- | --- |
| 28 | 3.1.2.3 | **Firmware Repetidor** | 2018-05-18 | 2018-05-31 | 23 |  | 88h |
| 29 | 3.1.2.3.1 | **Aplicacion Gral** | 2018-05-18 | 2018-05-28 |  |  | 64h |
| 30 | 3.1.2.3.1.1 | App | 2018-05-18 | 2018-05-18 |  | 90% | 8h |
| 31 | 3.1.2.3.1.2 | Prueba unitaria | 2018-05-18 | 2018-05-28 |  | 90% | 56h |
| 32 | 3.1.2.3.2 | Prueba Gral | 2018-05-29 | 2018-05-31 | 29 |  | 24h |
| 33 | 3.1.2.4 | **Firmware PANCO** | 2018-06-01 | 2018-07-23 | 28 |  | 304h |
| 34 | 3.1.2.4.1 | **Aplicacion Gral** | 2018-06-01 | 2018-07-12 |  |  | 248h |
| 35 | 3.1.2.4.1.1 | App | 2018-06-01 | 2018-06-01 |  | 95% | 8h |
| 36 | 3.1.2.4.1.2 | Pruebas unitarias | 2018-06-01 | 2018-07-12 |  | 10% | 240h |
| 37 | 3.1.2.4.2 | Prueba Gral | 2018-07-13 | 2018-07-23 | 34 |  | 56h |
| 38 | 3.1.2.5 | **Firmware GateWay** | 2018-07-24 | 2018-09-12 | 33 |  | 304h |
| 39 | 3.1.2.5.1 | **Aplicacion Gral** | 2018-07-24 | 2018-09-03 |  |  | 248h |
| 40 | 3.1.2.5.1.1 | App | 2018-07-24 | 2018-07-24 |  | 90% | 8h |
| 41 | 3.1.2.5.1.2 | Prueba Unitaria | 2018-07-24 | 2018-09-03 |  | 10% | 240h |
| 42 | 3.1.2.5.2 | Prueba Gral | 2018-09-04 | 2018-09-12 | 39 |  | 56h |
| 43 | 3.1.3 | **Diseño y Armado de PCB** | 2018-09-13 | 2018-12-20 | 18 |  | 568h |
| 44 | 3.1.3.1 | **Diseño y diagramado** | 2018-09-13 | 2018-11-23 |  |  | 416h |
| 45 | 3.1.3.1.1 | Diseño Monitor | 2018-09-13 | 2018-09-18 |  | 100% | 32h |
| 46 | 3.1.3.1.2 | Diseño PA | 2018-09-19 | 2018-10-04 | 45 | 100% | 96h |
| 47 | 3.1.3.1.3 | Diseño Repetidor | 2018-10-05 | 2018-10-12 | 46 | 100% | 48h |
| 48 | 3.1.3.1.4 | Diseño PANCO | 2018-10-15 | 2018-11-02 | 47 | 100% | 120h |
| 49 | 3.1.3.1.5 | Diseño GateWay | 2018-11-05 | 2018-11-23 | 48 | 100% | 120h |
| 50 | 3.1.3.2 | Impresion PCB | 2018-11-26 | 2018-11-26 | 44 | 100% | 8h |
| 51 | 3.1.3.3 | Grabado y Mecanizacion | 2018-11-27 | 2018-11-27 | 50 | 100% | 8h |
| 52 | 3.1.3.4 | Montaje de Componentes | 2018-11-28 | 2018-12-06 | 51 | 90% | 56h |
| 53 | 3.1.3.5 | Pruebas de Dispositivo | 2018-12-07 | 2018-12-20 | 52 | 50% | 80h |
| 54 | 3.1.4 | Pruebas Cadena Avance | 2018-12-21 | 2019-01-31 | 43 |  | 240h |
| 55 | 3.1.5 | Version MIMIA OPT | 2019-02-01 | 2019-06-06 | 54 | 80% | 720h |
| 56 | 3.1.6 | Version MIMIA MEMS | 2019-06-07 | 2019-10-10 | 55 | 50% | 720h |
| 57 | 3.1.7 | Version CIAA MOTE | 2019-10-11 | 2020-02-07 | 56 | 70% | 688h |
| 58 | 3.1.8 | Version MIMIA STICK | 2020-02-10 | 2020-03-20 | 57 | 60% | 240h |
| 59 | 3.1.9 | Version MIMIA XSocket | 2020-03-23 | 2020-04-17 | 58 | 50% | 160h |

| ID | WBS | Task | Start | Finish | Predecessors | Complete | Work |
| --- | --- | --- | --- | --- | --- | --- | --- |
| 60 | 3.2 | **Versión 0.9** | 2020-04-20 | 2021-03-30 | 16 |  | 1976h |
| 61 | 3.2.1 | **CbaMot Monitor** | 2020-04-20 | 2021-03-30 |  |  | 1976h |
| 62 | 3.2.1.1 | **Actualizacion Firmware** | 2020-04-20 | 2020-05-06 |  |  | 104h |
| 63 | 3.2.1.1.1 | optimizacion APP | 2020-04-20 | 2020-05-01 |  |  | 80h |
| 64 | 3.2.1.1.2 | Pruebas | 2020-05-04 | 2020-05-06 | 63 |  | 24h |
| 65 | 3.2.1.2 | **Diseño Gabinete** | 2020-05-07 | 2020-05-19 | 62 |  | 72h |
| 66 | 3.2.1.2.1 | Aprendizaje soft | 2020-05-07 | 2020-05-13 |  | 100% | 40h |
| 67 | 3.2.1.2.2 | Diseño gabinete | 2020-05-14 | 2020-05-18 | 66 | 79% | 24h |
| 68 | 3.2.1.2.3 | Impresion | 2020-05-19 | 2020-05-19 | 67 | 100% | 8h |
| 69 | 3.2.1.3 | **Inactividad** | 2020-05-20 | 2021-02-23 | 65 |  | 1600h |
| 70 | 3.2.1.3.1 | INCUBADORA EMPR. | 2020-05-20 | 2021-02-23 |  |  | 1600h |
| 71 | 3.2.1.4 | **Actualizacion PCB** | 2021-02-24 | 2021-03-30 | 69 |  | 200h |
| 72 | 3.2.1.4.1 | Diseño PCB | 2021-02-24 | 2021-03-01 |  |  | 32h |
| 73 | 3.2.1.4.2 | Gabado y Mecanizacion | 2021-03-02 | 2021-03-23 | 72 |  | 128h |
| 74 | 3.2.1.4.3 | Montaje | 2021-03-24 | 2021-03-30 | 73 |  | 40h |
| 75 | 3.3 | **Versión 0.9a (Prototipo)** | 2021-03-31 | 2021-05-19 | 60 |  | 448h |
| 76 | 3.3.1 | Pruebas y verificación | 2021-03-31 | 2021-04-20 |  |  | 120h |
| 77 | 3.3.2 | Actualizacion Firmware | 2021-04-21 | 2021-04-21 | 76 |  | 8h |
| 78 | 3.3.3 | Actualizacion PCB | 2021-04-22 | 2021-05-19 | 77 |  | 160h |
| 79 | 3.3.4 | Puebas de impacto servidor | 2021-03-31 | 2021-04-27 |  |  | 160h |
| 80 | 3.4 | **Versión 0.9b (PMV)** | 2021-05-20 | 2021-10-19 | 75 |  | 872h |
| 81 | 3.4.1 | Modificaciones gabinete | 2021-05-20 | 2021-05-25 |  |  | 32h |
| 82 | 3.4.2 | Fabricación gabinetes | 2021-05-26 | 2021-06-03 | 81 |  | 56h |
| 83 | 3.4.3 | Documentación | 2021-06-04 | 2021-06-04 | 82 |  | 8h |
| 84 | 3.4.4 | Empaques | 2021-06-07 | 2021-06-15 | 83 |  | 56h |
| 85 | 3.4.5 | Etapa de pruebas cliente | 2021-06-16 | 2021-10-19 | 84 |  | 720h |

| ID | WBS | Task | Start | Finish | Predecessors | Complete | Work |
| --- | --- | --- | --- | --- | --- | --- | --- |
| 86 | 3.5 | **Versión 1.0** | 2021-10-20 | 2022-04-19 | 80 |  | 1040h |
| 87 | 3.5.1 | Modificación Firmware | 2021-10-20 | 2021-10-25 |  |  | 32h |
| 88 | 3.5.2 | Modificación pcb | 2021-10-26 | 2021-10-26 | 87 |  | 8h |
| 89 | 3.5.3 | Modificación gabinete | 2021-10-27 | 2021-11-01 | 88 |  | 32h |
| 90 | 3.5.4 | Matriceria | 2021-11-02 | 2021-12-03 | 89 |  | 192h |
| 91 | 3.5.5 | Documentacion | 2021-12-06 | 2021-12-14 | 90 |  | 56h |
| 92 | 3.5.6 | Certificación | 2021-12-15 | 2022-04-19 | 91 |  | 720h |
| 93 | 4 | CULMINACIÓN | 2022-04-20 | 2022-05-10 | 86 | 100% | 120h |
| 94 | 5 | Plan de Mercadeo | 2022-05-11 | 2022-05-31 | 93 |  | 120h |
